# Lab2-1914022-NguyenTanLoc

Schedule from MS Project, 2022-08-15 to 2023-01-20, status date 2022-12-01, costs in ₫, A marks actual dates.

## Calendars

- Standard: Mon-Fri 08:00-12:00, 13:00-17:00; Sat-Sun off. Exceptions (off unless hours are given): 2022-09-10 08:00-12:00, 13:00-17:00.

## Resources

| Resource | Rate |
| --- | --- |
| Kha | 200000 |
| HA1 | 175000 |
| HA2 | 175000 |
| CLIP1 | 175000 |
| CLIP2 | 175000 |
| Lộc | 200000 |
| ND1 | 100000 |
| ND2 | 100000 |
| ND3 | 100000 |
| ND4 | 100000 |
| SK1 | 120000 |
| SK2 | 120000 |
| SK3 | 120000 |
| SK4 | 120000 |
| TTO1 | 150000 |
| TTO2 | 150000 |
| TTOF1 | 150000 |
| TTOF2 | 150000 |
| MC | 200000 |
| Đội Văn nghệ | 150000 |
| Dụng cụ sự kiện | 100000000 |
| TTOF3 | 150000 |
| TTOF4 | 150000 |
| TTO3 | 150000 |
| TTO4 | 150000 |
| KOL | 200000000 |

## Schedule

| ID | WBS | Task | Type | Duration | Start | Finish | Predecessors | Complete | Remaining | Actual finish | Baseline start | Baseline finish | Baseline duration | Total slack | Constraint | Resources | Work | Actual work | Cost | Baseline cost | Actual cost |
| --- | --- | --- | --- | --- | --- | --- | --- | --- | --- | --- | --- | --- | --- | --- | --- | --- | --- | --- | --- | --- | --- |
| 1 | 1 | **PROJECT** |  | 116d | 2022-08-15 A | 2023-01-20 |  | 86% | 16.8d |  | 2022-08-15 | 2023-01-20 | 116d | 0d |  |  | 5664h | 4944h | 1,429,680,000 | 1,429,680,000 | 1,316,080,000 |
| 2 | 1.1 | **Thời gian khởi động** |  | 8d | 2022-08-15 A | 2022-08-24 |  | 100% |  | 2022-08-25 | 2022-08-15 | 2022-08-24 | 8d |  |  |  | 288h | 288h | 49,680,000 | 49,680,000 | 49,680,000 |
| 3 | 1.1.1 | Phân tích và mô tả dự án |  | 4d | 2022-08-15 A | 2022-08-18 A |  | 100% |  |  | 2022-08-15 | 2022-08-18 | 4d |  |  | Lộc; Kha | 64h | 64h | 12,800,000 | 12,800,000 | 12,800,000 |
| 4 | 1.1.2 | Book nhân sự |  | 2d | 2022-08-19 A | 2022-08-22 A | 3 | 100% |  |  | 2022-08-19 | 2022-08-22 | 2d |  |  | Kha; Lộc | 32h | 32h | 6,400,000 | 6,400,000 | 6,400,000 |
| 5 | 1.1.3 | Nghiên cứu Guideline |  | 1d | 2022-08-23 A | 2022-08-23 A | 4 | 100% |  |  | 2022-08-23 | 2022-08-23 | 1d |  |  | Kha; Lộc; ND1; CLIP1; HA1; TTO1; TTOF1; SK1 | 64h | 64h | 10,160,000 | 10,160,000 | 10,160,000 |
| 6 | 1.1.4 | Quy tắc làm việc |  | 1d | 2022-08-25 A | 2022-08-25 A | 4 | 100% |  |  | 2022-08-25 | 2022-08-25 | 1d |  |  | Kha; Lộc; ND1; CLIP1; HA1; TTO1; TTOF1; SK1 | 64h | 64h | 10,160,000 | 10,160,000 | 10,160,000 |
| 7 | 1.1.5 | Trao đổi thắc mắc |  | 1d | 2022-08-24 A | 2022-08-24 A | 5 | 100% |  |  | 2022-08-24 | 2022-08-24 | 1d |  |  | Kha; Lộc; ND1; CLIP1; HA1; TTO1; TTOF1; SK1 | 64h | 64h | 10,160,000 | 10,160,000 | 10,160,000 |
| 8 | 1.2 | **Thời gian hoàn thành Kế hoạch tổng và gửi duyệt** |  | 3d | 2022-08-26 A | 2022-08-30 A | 2 | 100% |  |  | 2022-08-26 | 2022-08-30 | 3d |  |  |  | 40h | 40h | 8,000,000 | 8,000,000 | 8,000,000 |
| 9 | 1.2.1 | Lập kế hoạch Tổng | manual | 2d | 2022-08-26 A | 2022-08-29 A |  | 100% |  |  | 2022-08-26 | 2022-08-29 | 2d |  |  | Lộc; Kha | 32h | 32h | 6,400,000 | 6,400,000 | 6,400,000 |
| 10 | 1.2.2 | Gửi duyệt | manual | 1d | 2022-08-30 A | 2022-08-30 A | 9 | 100% |  |  | 2022-08-30 | 2022-08-30 | 1d |  |  | Lộc | 8h | 8h | 1,600,000 | 1,600,000 | 1,600,000 |
| 11 | 1.3 | **Thời gian chỉnh sửa Kế hoạch tổng** |  | 2d | 2022-08-31 A | 2022-09-01 A | 8 | 100% |  |  | 2022-08-31 | 2022-09-01 | 2d |  |  |  | 32h | 32h | 6,400,000 | 6,400,000 | 6,400,000 |
| 12 | 1.3.1 | Chỉnh sửa kế hoạch Tổng | manual | 1d | 2022-08-31 A | 2022-08-31 A |  | 100% |  |  | 2022-08-31 | 2022-08-31 | 1d |  |  | Lộc; Kha | 16h | 16h | 3,200,000 | 3,200,000 | 3,200,000 |
| 13 | 1.3.2 | Chốt kế hoạch Tổng | manual | 1d | 2022-09-01 A | 2022-09-01 A | 12 | 100% |  |  | 2022-09-01 | 2022-09-01 | 1d |  |  | Lộc; Kha | 16h | 16h | 3,200,000 | 3,200,000 | 3,200,000 |
| 14 | 1.4 | **Thời gian thực thi** |  | 102d | 2022-09-02 A | 2023-01-20 | 11 | 86% | 13.92d |  | 2022-09-02 | 2023-01-20 | 102d | 0d |  |  | 5000h | 4400h | 809,840,000 | 809,840,000 | 719,840,000 |
| 15 | 1.4.1 | **Nội dung sự kiện** |  | 66d | 2022-09-02 A | 2022-12-01 A |  | 100% |  |  | 2022-09-02 | 2022-12-01 | 66d |  |  |  | 1688h | 1688h | 312,800,000 | 312,800,000 | 312,800,000 |
| 16 | 1.4.1.1 | **Lên kế hoạch** |  | 32d | 2022-09-02 A | 2022-10-14 A |  | 100% |  |  | 2022-09-02 | 2022-10-14 | 32d |  |  |  | 760h | 760h | 87,200,000 | 87,200,000 | 87,200,000 |
| 17 | 1.4.1.1.1 | Lên ý tưởng concept |  | 2d | 2022-09-02 A | 2022-09-05 A |  | 100% |  |  | 2022-09-02 | 2022-09-05 | 2d |  |  | Lộc; ND1 | 32h | 32h | 4,800,000 | 4,800,000 | 4,800,000 |
| 18 | 1.4.1.1.2 | Xây dựng timeline chi tiết NDSK |  | 4d | 2022-09-02 A | 2022-09-07 A |  | 100% |  |  | 2022-09-02 | 2022-09-07 | 4d |  |  | Kha; Lộc; ND1; ND2; ND3; ND4 | 96h | 96h | 12,800,000 | 12,800,000 | 12,800,000 |
| 19 | 1.4.1.1.3 | Set nguyên tắc làm việc, thống nhất các mục đích và công việc team |  | 7d | 2022-09-20 A | 2022-10-14 A | 18 | 100% |  |  | 2022-09-20 | 2022-10-14 | 7d |  |  | ND1; ND2; ND3; ND4 | 64h | 64h | 6,400,000 | 6,400,000 | 6,400,000 |
| 20 | 1.4.1.1.4 | Lên ý tưởng trò chơi |  | 8d | 2022-09-08 A | 2022-10-11 A | 18 | 100% |  |  | 2022-09-08 | 2022-10-11 | 8d |  |  | ND1; ND2 | 80h | 80h | 8,000,000 | 8,000,000 | 8,000,000 |
| 21 | 1.4.1.1.5 | Lên ý tưởng văn nghệ |  | 7d | 2022-09-14 A | 2022-09-22 A | 18 | 100% |  |  | 2022-09-14 | 2022-09-22 | 7d |  |  | ND2; ND3 | 80h | 80h | 8,000,000 | 8,000,000 | 8,000,000 |
| 22 | 1.4.1.1.6 | Lên ý tưởng các hoạt động |  | 10d | 2022-09-08 A | 2022-10-10 A | 18 | 100% |  |  | 2022-09-08 | 2022-10-10 | 10d |  |  | ND3; ND4 | 80h | 80h | 8,000,000 | 8,000,000 | 8,000,000 |
| 23 | 1.4.1.1.7 | Lên ý tưởng clip |  | 4d | 2022-09-08 A | 2022-09-22 A | 18 | 100% |  |  | 2022-09-08 | 2022-09-22 | 4d |  |  | ND1; ND4 | 48h | 48h | 4,800,000 | 4,800,000 | 4,800,000 |
| 24 | 1.4.1.1.8 | Xây dựng bản mô tả trò chơi hoàn chỉnh |  | 2d | 2022-10-12 A | 2022-10-13 A | 20 | 100% |  |  | 2022-10-12 | 2022-10-13 | 2d |  |  | ND1 | 16h | 16h | 1,600,000 | 1,600,000 | 1,600,000 |
| 25 | 1.4.1.1.9 | Giao brief clip |  | 1d | 2022-09-23 A | 2022-09-23 A | 23 | 100% |  |  | 2022-09-23 | 2022-09-23 | 1d |  |  | ND1 | 8h | 8h | 800,000 | 800,000 | 800,000 |
| 26 | 1.4.1.1.10 | Thực thi clip |  | 5d | 2022-09-26 A | 2022-10-13 A | 25 | 100% |  |  | 2022-09-26 | 2022-10-13 | 5d |  |  | ND2; ND3; ND4 | 96h | 96h | 9,600,000 | 9,600,000 | 9,600,000 |
| 27 | 1.4.1.1.11 | Lập bảng dự trù kinh phí NDSK | manual | 7d | 2022-09-10 A | 2022-09-21 A |  | 100% |  |  | 2022-09-10 | 2022-09-21 | 9d |  | start no earlier than 2022-09-10 | Kha; ND1 | 64h | 64h | 9,600,000 | 9,600,000 | 9,600,000 |
| 28 | 1.4.1.1.12 | Thảo luận nội dung chương trình | manual | 5d | 2022-09-10 A | 2022-09-19 A |  | 100% |  |  | 2022-09-10 | 2022-09-19 | 5d |  | start no earlier than 2022-09-10 | Kha; Lộc; ND1; ND2; ND3; ND4 | 96h | 96h | 12,800,000 | 12,800,000 | 12,800,000 |

| ID | WBS | Task | Type | Duration | Start | Finish | Predecessors | Complete | Baseline start | Baseline finish | Baseline duration | Constraint | Resources | Work | Actual work | Cost | Baseline cost | Actual cost |
| --- | --- | --- | --- | --- | --- | --- | --- | --- | --- | --- | --- | --- | --- | --- | --- | --- | --- | --- |
| 29 | 1.4.1.2 | **Thực thi kế hoạch** |  | 42d | 2022-09-27 A | 2022-11-23 A | 16 | 100% | 2022-09-27 | 2022-11-23 | 42d |  |  | 784h | 784h | 204,800,000 | 204,800,000 | 204,800,000 |
| 30 | 1.4.1.2.1 | Chốt ý tưởng trò chơi, văn nghệ, ý tưởng clip,các hoạt động |  | 4d | 2022-10-17 A | 2022-10-26 A |  | 100% | 2022-10-17 | 2022-10-26 | 4d |  | Kha; Lộc; ND1 | 48h | 48h | 8,000,000 | 8,000,000 | 8,000,000 |
| 31 | 1.4.1.2.2 | Tập Văn Nghệ |  | 6d | 2022-10-27 A | 2022-11-03 A | 30 | 100% | 2022-10-27 | 2022-11-03 | 6d |  | Đội Văn nghệ | 48h | 48h | 7,200,000 | 7,200,000 | 7,200,000 |
| 32 | 1.4.1.2.3 | Book MC và nhân sự hỗ trợ |  | 4d | 2022-10-27 A | 2022-11-01 A | 30 | 100% | 2022-10-27 | 2022-11-01 | 4d |  | ND3 | 32h | 32h | 3,200,000 | 3,200,000 | 3,200,000 |
| 33 | 1.4.1.2.4 | Tìm nhạc, âm thanh liên quan |  | 6d | 2022-10-27 A | 2022-11-03 A | 30 | 100% | 2022-10-27 | 2022-11-03 | 6d |  | ND2; ND4 | 96h | 96h | 9,600,000 | 9,600,000 | 9,600,000 |
| 34 | 1.4.1.2.5 | Hoàn chỉnh script MC |  | 4d | 2022-11-02 A | 2022-11-07 A | 32 | 100% | 2022-11-02 | 2022-11-07 | 4d |  | MC; ND1 | 64h | 64h | 9,600,000 | 9,600,000 | 9,600,000 |
| 35 | 1.4.1.2.6 | Lập SSOL | manual | 6d | 2022-09-27 A | 2022-10-04 A |  | 100% | 2022-09-27 | 2022-10-04 | 6d |  | MC; ND1; ND2; ND3; ND4 | 240h | 240h | 28,800,000 | 28,800,000 | 28,800,000 |
| 36 | 1.4.1.2.7 | Duyệt các tiết mục văn nghệ, kỹ thuật vầ MC |  | 4d | 2022-11-18 A | 2022-11-23 A | 34 | 100% | 2022-11-18 | 2022-11-23 | 4d |  | Kha; Lộc | 64h | 64h | 12,800,000 | 12,800,000 | 12,800,000 |
| 37 | 1.4.1.2.8 | Chuẩn bị slide trình chiếu | manual | 3d | 2022-10-05 A | 2022-10-07 A |  | 100% | 2022-10-05 | 2022-10-07 | 3d |  | ND1 | 24h | 24h | 2,400,000 | 2,400,000 | 2,400,000 |
| 38 | 1.4.1.2.9 | Họp SSOL |  | 8d | 2022-10-19 A | 2022-11-01 A | 35 | 100% | 2022-10-19 | 2022-11-01 | 8d |  | Kha; Lộc; ND1 | 96h | 96h | 16,000,000 | 16,000,000 | 16,000,000 |
| 39 | 1.4.1.2.10 | Chuẩn bị vật dụng setup với sự kiện | manual | 3d | 2022-10-05 A | 2022-10-07 A |  | 100% | 2022-10-05 | 2022-10-07 | 3d |  | ND2; ND3; ND4; Dụng cụ sự kiện | 72h | 72h | 107,200,000 | 107,200,000 | 107,200,000 |
| 40 | 1.4.1.3 | **Kết thúc** |  | 6d | 2022-11-24 A | 2022-12-01 A | 29 | 100% | 2022-11-24 | 2022-12-01 | 6d |  |  | 144h | 144h | 20,800,000 | 20,800,000 | 20,800,000 |
| 41 | 1.4.1.3.1 | Feedback, report dự án |  | 4d | 2022-11-24 A | 2022-11-29 A |  | 100% | 2022-11-24 | 2022-11-29 | 4d |  | Kha; Lộc; ND1; ND2; ND3; ND4 | 96h | 96h | 12,800,000 | 12,800,000 | 12,800,000 |
| 42 | 1.4.1.3.2 | Lập Guideline |  | 2d | 2022-11-30 A | 2022-12-01 A | 41 | 100% | 2022-11-30 | 2022-12-01 | 2d |  | Kha; Lộc; ND1 | 48h | 48h | 8,000,000 | 8,000,000 | 8,000,000 |
| 43 | 1.4.2 | **Sự kiện** |  | 53d | 2022-09-16 A | 2022-11-29 A | 16 | 100% | 2022-09-16 | 2022-11-29 | 53d |  |  | 768h | 768h | 99,840,000 | 99,840,000 | 99,840,000 |
| 44 | 1.4.2.1 | **Pre** |  | 27d | 2022-09-16 A | 2022-10-24 A |  | 100% | 2022-09-16 | 2022-10-24 | 27d |  |  | 160h | 160h | 24,320,000 | 24,320,000 | 24,320,000 |
| 45 | 1.4.2.1.1 | Kế hoạch sự kiện |  | 6d | 2022-10-17 A | 2022-10-24 A |  | 100% | 2022-10-17 | 2022-10-24 | 6d |  | Lộc; Kha; SK1 | 96h | 96h | 16,640,000 | 16,640,000 | 16,640,000 |
| 46 | 1.4.2.1.2 | Lên ý tưởng chương trình | manual | 2d | 2022-09-16 A | 2022-09-19 A |  | 100% | 2022-09-16 | 2022-09-19 | 2d | start no earlier than 2022-09-16 | SK1; SK2; SK3; SK4 | 64h | 64h | 7,680,000 | 7,680,000 | 7,680,000 |
| 47 | 1.4.2.2 | **Lập kế hoạch** |  | 25d | 2022-09-29 A | 2022-11-02 A | 44 | 100% | 2022-09-29 | 2022-11-02 | 25d |  |  | 168h | 168h | 20,160,000 | 20,160,000 | 20,160,000 |
| 48 | 1.4.2.2.1 | Timeline sự kiện |  | 3d | 2022-10-25 A | 2022-10-27 A |  | 100% | 2022-10-25 | 2022-10-27 | 3d |  | SK1 | 24h | 24h | 2,880,000 | 2,880,000 | 2,880,000 |
| 49 | 1.4.2.2.2 | Làm dự trù kinh phí |  | 3d | 2022-10-25 A | 2022-10-27 A |  | 100% | 2022-10-25 | 2022-10-27 | 3d |  | SK2 | 24h | 24h | 2,880,000 | 2,880,000 | 2,880,000 |
| 50 | 1.4.2.2.3 | Chốt địa điểm |  | 2d | 2022-10-25 A | 2022-10-26 A |  | 100% | 2022-10-25 | 2022-10-26 | 2d |  | SK3 | 16h | 16h | 1,920,000 | 1,920,000 | 1,920,000 |
| 51 | 1.4.2.2.4 | Khảo sát địa điểm |  | 2d | 2022-10-27 A | 2022-10-28 A | 50 | 100% | 2022-10-27 | 2022-10-28 | 2d |  | SK4 | 16h | 16h | 1,920,000 | 1,920,000 | 1,920,000 |
| 52 | 1.4.2.2.5 | Lên kế hoạch setup |  | 4d | 2022-10-28 A | 2022-11-02 A | 49 | 100% | 2022-10-28 | 2022-11-02 | 4d |  | SK1 | 32h | 32h | 3,840,000 | 3,840,000 | 3,840,000 |
| 53 | 1.4.2.2.6 | Nhận yêu cầu setup trò chơi từ NDSK | manual | 3d | 2022-09-29 A | 2022-10-03 A |  | 100% | 2022-09-29 | 2022-10-03 | 3d | start no earlier than 2022-09-29 | SK2 | 24h | 24h | 2,880,000 | 2,880,000 | 2,880,000 |
| 54 | 1.4.2.2.7 | Dự trù kinh phí chi tiết | manual | 2d | 2022-10-04 A | 2022-10-05 A | 53 | 100% | 2022-10-04 | 2022-10-05 | 2d | start no earlier than 2022-09-29 | SK3 | 16h | 16h | 1,920,000 | 1,920,000 | 1,920,000 |
| 55 | 1.4.2.2.8 | Dự trù rủi ro | manual | 2d | 2022-10-04 A | 2022-10-05 A | 53 | 100% | 2022-10-04 | 2022-10-05 | 2d | start no earlier than 2022-10-04 | SK1 | 16h | 16h | 1,920,000 | 1,920,000 | 1,920,000 |

| ID | WBS | Task | Duration | Start | Finish | Predecessors | Complete | Remaining | Baseline start | Baseline finish | Baseline duration | Total slack | Free slack | Resources | Work | Actual work | Cost | Baseline cost | Actual cost |
| --- | --- | --- | --- | --- | --- | --- | --- | --- | --- | --- | --- | --- | --- | --- | --- | --- | --- | --- | --- |
| 56 | 1.4.2.3 | **Thực thi** | 9d | 2022-11-03 A | 2022-11-15 A | 47 | 100% |  | 2022-11-03 | 2022-11-15 | 9d |  |  |  | 200h | 200h | 24,000,000 | 24,000,000 | 24,000,000 |
| 57 | 1.4.2.3.1 | Lên danh sách các vật dụng cần mua | 2d | 2022-11-03 A | 2022-11-04 A |  | 100% |  | 2022-11-03 | 2022-11-04 | 2d |  |  | SK1; SK2 | 32h | 32h | 3,840,000 | 3,840,000 | 3,840,000 |
| 58 | 1.4.2.3.2 | Gửi script design in ấn cho hình ảnh | 1d | 2022-11-03 A | 2022-11-03 A |  | 100% |  | 2022-11-03 | 2022-11-03 | 1d |  |  | SK3 | 8h | 8h | 960,000 | 960,000 | 960,000 |
| 59 | 1.4.2.3.3 | Mua đồ | 3d | 2022-11-07 A | 2022-11-09 A | 57 | 100% |  | 2022-11-07 | 2022-11-09 | 3d |  |  | SK2; SK3; SK4 | 72h | 72h | 8,640,000 | 8,640,000 | 8,640,000 |
| 60 | 1.4.2.3.4 | Nhận hình ảnh từ phía hình ảnh | 3d | 2022-11-04 A | 2022-11-11 A | 58 | 100% |  | 2022-11-04 | 2022-11-11 | 3d |  |  | SK4 | 24h | 24h | 2,880,000 | 2,880,000 | 2,880,000 |
| 61 | 1.4.2.3.5 | Set up quà tặng đồ trang trí và vật dụng trò chơi | 3d | 2022-11-10 A | 2022-11-14 A | 59 | 100% |  | 2022-11-10 | 2022-11-14 | 3d |  |  | SK2; SK3 | 48h | 48h | 5,760,000 | 5,760,000 | 5,760,000 |
| 62 | 1.4.2.3.6 | Check list | 2d | 2022-11-10 A | 2022-11-11 A | 59 | 100% |  | 2022-11-10 | 2022-11-11 | 2d |  |  | SK1 | 16h | 16h | 1,920,000 | 1,920,000 | 1,920,000 |
| 63 | 1.4.2.3.7 | Họp SSOL tổng | 1d | 2022-11-15 A | 2022-11-15 A | 61 | 100% |  | 2022-11-15 | 2022-11-15 | 1d |  |  |  |  |  |  |  |  |
| 64 | 1.4.2.4 | **Kết thúc** | 10d | 2022-11-16 A | 2022-11-29 A | 56 | 100% |  | 2022-11-16 | 2022-11-29 | 10d |  |  |  | 240h | 240h | 31,360,000 | 31,360,000 | 31,360,000 |
| 65 | 1.4.2.4.1 | Feedback | 4d | 2022-11-18 A | 2022-11-25 A |  | 100% |  | 2022-11-18 | 2022-11-25 | 4d |  |  | Lộc; Kha; SK1 | 48h | 48h | 8,320,000 | 8,320,000 | 8,320,000 |
| 66 | 1.4.2.4.2 | Lập Guideline | 2d | 2022-11-16 A | 2022-11-17 A |  | 100% |  | 2022-11-16 | 2022-11-17 | 2d |  |  | SK1; SK2 | 32h | 32h | 3,840,000 | 3,840,000 | 3,840,000 |
| 67 | 1.4.2.4.3 | Quyết toán | 10d | 2022-11-16 A | 2022-11-29 A |  | 100% |  | 2022-11-16 | 2022-11-29 | 10d |  |  | SK3; SK4 | 160h | 160h | 19,200,000 | 19,200,000 | 19,200,000 |
| 68 | 1.4.3 | **Truyền thông online** | 40d | 2022-10-17 A | 2022-12-09 | 16 | 83% | 6.96d | 2022-10-17 | 2022-12-09 | 40d | 30d |  |  | 720h | 624h | 108,000,000 | 108,000,000 | 93,600,000 |
| 69 | 1.4.3.1 | Brief BND | 10d | 2022-10-17 A | 2022-10-28 A |  | 100% |  | 2022-10-17 | 2022-10-28 | 10d |  |  | TTO1; TTO2 | 160h | 160h | 24,000,000 | 24,000,000 | 24,000,000 |
| 70 | 1.4.3.2 | Gửi trường final BND | 10d | 2022-11-01 A | 2022-11-14 A | 69 | 100% |  | 2022-11-01 | 2022-11-14 | 10d |  |  | TTO1 | 80h | 80h | 12,000,000 | 12,000,000 | 12,000,000 |
| 71 | 1.4.3.3 | Brief Viral Clip | 10d | 2022-11-15 A | 2022-11-28 A | 70 | 100% |  | 2022-11-15 | 2022-11-28 | 10d |  |  | TTO3; TTO4 | 160h | 160h | 24,000,000 | 24,000,000 | 24,000,000 |
| 72 | 1.4.3.4 | Liên hệ HTTT/KOLS | 10d | 2022-10-31 A | 2022-11-11 A | 69 | 100% |  | 2022-10-31 | 2022-11-11 | 10d |  |  | TTO3 | 80h | 80h | 12,000,000 | 12,000,000 | 12,000,000 |
| 73 | 1.4.3.5 | Viral clip | 19d | 2022-11-14 A | 2022-12-09 | 72 | 68% | 6d | 2022-11-14 | 2022-12-09 | 19d | 30d |  | TTO2; TTO4 | 160h | 112h | 24,000,000 | 24,000,000 | 16,800,000 |
| 74 | 1.4.3.6 | Link đăng kí mua ấn phẩm | 10d | 2022-11-14 A | 2022-12-09 | 72 | 40% | 6d | 2022-11-14 | 2022-12-09 | 10d | 30d |  | TTO3 | 80h | 32h | 12,000,000 | 12,000,000 | 4,800,000 |
| 75 | 1.4.4 | **Truyền thông offline** | 70d | 2022-10-17 A | 2023-01-20 | 16 | 64% | 25.08d | 2022-10-17 | 2023-01-20 | 70d | 0d |  |  | 1520h | 1016h | 236,000,000 | 236,000,000 | 160,400,000 |
| 76 | 1.4.4.1 | Gửi trường giấy tờ đặt bàn | 10d | 2022-10-17 A | 2022-10-28 A |  | 100% |  | 2022-10-17 | 2022-10-28 | 10d |  |  | TTOF1 | 80h | 80h | 12,000,000 | 12,000,000 | 12,000,000 |
| 77 | 1.4.4.2 | Gửi trường Poster | 20d | 2022-10-31 A | 2022-11-25 A | 76 | 100% |  | 2022-10-31 | 2022-11-25 | 20d |  |  | TTOF2 | 160h | 160h | 24,000,000 | 24,000,000 | 24,000,000 |
| 78 | 1.4.4.3 | Gửi trường Standee | 10d | 2022-10-17 A | 2022-10-28 A |  | 100% |  | 2022-10-17 | 2022-10-28 | 10d |  |  | TTOF3 | 80h | 80h | 12,000,000 | 12,000,000 | 12,000,000 |
| 79 | 1.4.4.4 | Set up | 40d | 2022-10-31 A | 2023-01-20 | 78 | 60% | 16d | 2022-10-31 | 2023-01-20 | 40d | 0d |  | TTOF1; TTOF2; TTOF3; TTOF4 | 640h | 512h | 96,000,000 | 96,000,000 | 76,800,000 |
| 80 | 1.4.4.5 | SSOL | 20d | 2022-11-03 A | 2022-12-12 |  | 65% | 7d | 2022-11-03 | 2022-12-12 | 20d | 9d | 0d | Kha; Lộc; TTOF1 | 240h | 184h | 44,000,000 | 44,000,000 | 35,600,000 |
| 81 | 1.4.4.6 | Training nhân sự | 20d | 2022-12-13 | 2023-01-09 | 80 |  |  | 2022-12-13 | 2023-01-09 | 20d | 9d |  | TTOF1; TTOF2 | 320h |  | 48,000,000 | 48,000,000 |  |

| ID | WBS | Task | Type | Duration | Start | Finish | Predecessors | Complete | Remaining | Baseline start | Baseline finish | Baseline duration | Total slack | Constraint | Resources | Work | Actual work | Cost | Baseline cost | Actual cost |
| --- | --- | --- | --- | --- | --- | --- | --- | --- | --- | --- | --- | --- | --- | --- | --- | --- | --- | --- | --- | --- |
| 82 | 1.4.5 | **Hình ảnh** |  | 12d | 2022-09-02 A | 2022-09-16 A | 17 | 100% |  | 2022-09-02 | 2022-09-16 | 12d |  |  |  | 192h | 192h | 33,600,000 | 33,600,000 | 33,600,000 |
| 83 | 1.4.5.1 | Thực thi Proposal tài trợ | manual | 6d | 2022-09-02 A | 2022-09-09 A |  | 100% |  | 2022-09-02 | 2022-09-09 | 6d |  |  | HA1 | 48h | 48h | 8,400,000 | 8,400,000 | 8,400,000 |
| 84 | 1.4.5.2 | Thực thi BND | manual | 6d | 2022-09-02 A | 2022-09-09 A |  | 100% |  | 2022-09-02 | 2022-09-09 | 6d |  |  | HA2 | 48h | 48h | 8,400,000 | 8,400,000 | 8,400,000 |
| 85 | 1.4.5.3 | Thực thi Standee | manual | 6d | 2022-09-10 A | 2022-09-16 A |  | 100% |  | 2022-09-10 | 2022-09-16 | 6d |  |  | HA1 | 48h | 48h | 8,400,000 | 8,400,000 | 8,400,000 |
| 86 | 1.4.5.4 | Thực thi ấn phẩm |  | 6d | 2022-09-10 A | 2022-09-16 A |  | 100% |  | 2022-09-10 | 2022-09-16 | 6d |  |  | HA2 | 48h | 48h | 8,400,000 | 8,400,000 | 8,400,000 |
| 87 | 1.4.6 | **Clip** |  | 7d | 2022-09-06 A | 2022-09-13 A | 17 | 100% |  | 2022-09-06 | 2022-09-13 | 7d |  |  |  | 112h | 112h | 19,600,000 | 19,600,000 | 19,600,000 |
| 88 | 1.4.6.1 | Thực thi viral clip |  | 7d | 2022-09-06 A | 2022-09-13 A |  | 100% |  | 2022-09-06 | 2022-09-13 | 7d |  |  | CLIP1 | 56h | 56h | 9,800,000 | 9,800,000 | 9,800,000 |
| 89 | 1.4.6.2 | Thực thi clip report |  | 7d | 2022-09-06 A | 2022-09-13 A |  | 100% |  | 2022-09-06 | 2022-09-13 | 7d |  |  | CLIP2 | 56h | 56h | 9,800,000 | 9,800,000 | 9,800,000 |
| 90 | 1.5 | Thời gian demo chương trình | manual | 2d | 2022-10-18 A | 2022-10-19 A |  | 100% |  | 2022-10-18 | 2022-10-19 | 2d |  | start no earlier than 2022-10-18 | Đội Văn nghệ; Kha; Lộc; MC; KOL | 64h | 64h | 212,000,000 | 212,000,000 | 212,000,000 |
| 91 | 1.6 | Thời gian diễn ra chương trình |  | 3d | 2022-10-20 A | 2022-11-02 A | 90 | 100% |  | 2022-10-20 | 2022-11-02 | 3d |  |  | CLIP1; Đội Văn nghệ; Dụng cụ sự kiện; HA1; Kha; KOL; Lộc; MC; TTO1; TTOF1 | 64h | 64h | 311,200,000 | 311,200,000 | 311,200,000 |
| 92 | 1.7 | **Thời gian sau chương trình** |  | 49d | 2022-11-03 A | 2023-01-10 | 91 | 38% | 30.15d | 2022-11-03 | 2023-01-10 | 49d | 8d |  |  | 176h | 56h | 32,560,000 | 32,560,000 | 8,960,000 |
| 93 | 1.7.1 | Feedback |  | 6d | 2022-11-03 A | 2023-01-10 |  | 83% | 1d | 2022-11-03 | 2023-01-10 | 6d | 8d |  | CLIP1; HA1; Kha; Lộc; ND1; SK1; TTO1; TTOF1 | 64h | 56h | 10,160,000 | 10,160,000 | 8,960,000 |
| 94 | 1.7.2 | Lập Guideline |  | 2d | 2022-12-09 | 2022-12-12 |  |  |  | 2022-12-09 | 2022-12-12 | 2d | 29d |  | Kha; Lộc | 32h |  | 6,400,000 | 6,400,000 |  |
| 95 | 1.7.3 | Quyết toán |  | 5d | 2022-12-02 | 2022-12-08 |  |  |  | 2022-12-02 | 2022-12-08 | 5d | 31d |  | Kha; Lộc | 80h |  | 16,000,000 | 16,000,000 |  |
